# Предварительный план2007

Schedule from MS Project, 2013-04-19 to 2014-08-06.

## Calendars

- Стандартный: Mon-Fri 09:00-13:00, 14:00-18:00; Sat-Sun off. Exceptions (off unless hours are given): 2013-05-01 to 2013-05-05 (Первое мая), 2013-05-09 to 2013-05-12 (Девятое мая).

## Resources

| Resource |
| --- |
| Шилин Роман |
| Аналитик |
| Андрей Пирожков |
| Конструктор 1 |
| Денис Митавский |
| Java разработчик1 |
| Java разработчик2 |
| Валерий Мацукевич |
| Java разработчик3 |
| Java разработчик4 |
| WEB-дизайнер |
| Java разработчик |
| Андрей Цветков |
| Java разработчик5 |
| Тест Аналитик |
| Java разработчик6 |
| Тестировщик |
| Технический писатель |
| Технолог - администратор |
| Технический писатель2 |
| Системный аналитик1 |
| Системный аналитик2 |
| Системный аналитик3 |
| Системный аналитик4 |
| Владимир Панов |

## Schedule

| ID | WBS | Task | Type | Duration | Start | Finish | Predecessors | Total slack | Free slack | Constraint | Resources | Work |
| --- | --- | --- | --- | --- | --- | --- | --- | --- | --- | --- | --- | --- |
| 1 | 1 | **Разработка второй версии CM5** |  | 334d? | 2013-04-19 | 2014-08-06 |  | 0d |  |  |  | 47447.6h |
| 2 | 1.1 | Принято решение о разработке функциональных модулей | milestone | 0d | 2013-04-22 | 2013-04-22 |  | 0d |  | start no earlier than 2013-04-22 |  |  |
| 3 | 1.2 | Управление проектом |  | 267d | 2013-04-22 | 2014-05-06 | 2 | 66d |  |  | Шилин Роман | 2136h |
| 4 | 1.3 | Управление требованиями |  | 267d | 2013-04-22 | 2014-05-06 | 2 | 66d |  |  | Аналитик | 2136h |
| 5 | 1.4 | **Создание модуля "КАНЦЕЛЯРИЯ" (документоориентированная среда)** |  | 146d? | 2013-04-19 | 2013-11-15 |  | 1d |  |  |  | 10392h |
| 6 | 1.4.1 | Первичные требования для создания модуля "канцелярия" подготовлены | milestone | 0d | 2013-04-22 | 2013-04-22 | 2 | 0d |  | finish no earlier than 2012-04-02 |  |  |
| 7 | 1.4.2 | **Апробация идей прототипа** |  | 6d | 2013-04-19 | 2013-04-26 |  | 328d |  |  |  | 48h |
| 8 | 1.4.2.1 | Проведение предварительных испытаний системы |  | 6d | 2013-04-19 | 2013-04-26 |  | 328d |  |  | Андрей Цветков | 48h |
| 9 | 1.4.3 | **Проектирование** |  | 75d | 2013-04-22 | 2013-08-09 | 6 | 0d |  |  |  | 2096h |
| 10 | 1.4.3.1 | **Определение структуры модуля канцелярия** |  | 59d | 2013-04-22 | 2013-07-18 |  | 0d |  |  |  | 1960h |
| 11 | 1.4.3.1.1 | Разбивка на слои |  | 5d | 2013-04-22 | 2013-04-26 |  | 0d |  |  | Денис Митавский [50%]; Андрей Пирожков [50%] | 40h |
| 12 | 1.4.3.1.2 | Конфигурации, загрузка и инициализация системы в базовой конфигурации |  | 5d | 2013-04-29 | 2013-05-08 | 11 | 0d |  |  | Андрей Цветков; Денис Митавский [50%] | 60h |
| 13 | 1.4.3.1.3 | Базовая конфигурация объектов системы |  | 5d | 2013-04-29 | 2013-05-08 | 11 | 1d | 0d |  | Андрей Пирожков [50%]; Валерий Мацукевич | 60h |
| 14 | 1.4.3.1.4 | **Подготовка к разработке модуля "КАНЦЕЛЯРИЯ"** |  | 9d | 2013-05-13 | 2013-05-23 | 13 | 40d |  |  |  | 72h |
| 15 | 1.4.3.1.4.1 | Настройка среды разработки |  | 4d | 2013-05-13 | 2013-05-16 |  | 40d | 0d |  | Конструктор 1 | 32h |
| 16 | 1.4.3.1.4.2 | Поддержка UNIT-тестирования и интеграционного тестирования |  | 5d | 2013-05-17 | 2013-05-23 | 15 | 40d |  |  | Конструктор 1 | 40h |
| 17 | 1.4.3.1.5 | **Права доступа** |  | 12d | 2013-05-13 | 2013-05-28 |  | 37d |  |  |  | 156h |
| 18 | 1.4.3.1.5.1 | Финализация структуры хранения |  | 5d | 2013-05-13 | 2013-05-17 | 13 | 37d | 0d |  | Андрей Пирожков; Валерий Мацукевич | 80h |
| 19 | 1.4.3.1.5.2 | Модификация DAO для учета прав доступа |  | 5d | 2013-05-20 | 2013-05-24 | 13, 18 | 37d | 0d |  | Андрей Пирожков [50%]; Java разработчик | 60h |
| 20 | 1.4.3.1.5.3 | Скрипты по инициализации системы |  | 2d | 2013-05-27 | 2013-05-28 | 19 | 37d |  |  | Java разработчик | 16h |
| 21 | 1.4.3.1.6 | **Базовая имплементация слоя DAO** |  | 10d | 2013-05-13 | 2013-05-24 | 12 | 39d |  |  |  | 160h |
| 22 | 1.4.3.1.6.1 | Конфигурация слоя DAO |  | 5d | 2013-05-13 | 2013-05-17 |  | 39d | 0d |  | Денис Митавский; Андрей Цветков | 80h |
| 23 | 1.4.3.1.6.2 | Имплементация слоя DAO |  | 5d | 2013-05-20 | 2013-05-24 | 22 | 39d |  |  | Андрей Цветков; Денис Митавский | 80h |
| 24 | 1.4.3.1.7 | Workflow |  | 20d | 2013-05-13 | 2013-06-07 | 13 | 1d | 0d |  | Андрей Пирожков [50%]; Java разработчик | 240h |
| 25 | 1.4.3.1.8 | Базовая архитектура GUI (GWT) |  | 20d | 2013-05-13 | 2013-06-07 | 12 | 0d |  |  | Денис Митавский [50%]; Java разработчик | 240h |
| 26 | 1.4.3.1.9 | Поддержка механизма "логина" |  | 3d | 2013-06-10 | 2013-06-12 | 25 | 0d |  |  | Денис Митавский; Java разработчик | 48h |
| 27 | 1.4.3.1.10 | Веб-сервисы |  | 3d | 2013-06-10 | 2013-06-12 | 24 | 1d | 0d |  | Андрей Пирожков [50%]; Java разработчик | 36h |
| 28 | 1.4.3.1.11 | Списки |  | 10d | 2013-06-13 | 2013-06-26 | 26 | 0d |  |  | Денис Митавский; Валерий Мацукевич | 160h |
| 29 | 1.4.3.1.12 | Формы |  | 10d | 2013-06-27 | 2013-07-10 | 28 | 0d |  |  | Денис Митавский; Валерий Мацукевич | 160h |
| 30 | 1.4.3.1.13 | Вложения |  | 6d | 2013-07-11 | 2013-07-18 | 29 | 0d |  |  | Денис Митавский; Валерий Мацукевич | 96h |
| 31 | 1.4.3.1.14 | Поиск |  | 15d | 2013-06-13 | 2013-07-03 | 27 | 1d | 0d |  | Андрей Пирожков; Андрей Цветков | 240h |
| 32 | 1.4.3.1.15 | Полнотекстовый поиск |  | 10d | 2013-07-04 | 2013-07-17 | 31 | 1d |  |  | Андрей Пирожков; Андрей Цветков | 160h |
| 33 | 1.4.3.1.16 | Изучение возможностей CM4-клиента |  | 20d | 2013-04-22 | 2013-05-24 |  | 39d |  |  | Андрей Пирожков [10%]; Денис Митавский [10%] | 32h |
| 34 | 1.4.3.2 | Описание структуры модуля "КАНЦЕЛЯРИЯ" |  | 15d | 2013-07-19 | 2013-08-08 | 10 | 0d |  |  | Конструктор 1 | 120h |
| 35 | 1.4.3.3 | Уточнение состава и сроков работ |  | 1d | 2013-08-09 | 2013-08-09 | 34 | 0d |  |  | Андрей Пирожков; Денис Митавский | 16h |

| ID | WBS | Task | Type | Duration | Start | Finish | Predecessors | Total slack | Free slack | Resources | Work |
| --- | --- | --- | --- | --- | --- | --- | --- | --- | --- | --- | --- |
| 36 | 1.4.4 | **Разработка** |  | 40d | 2013-08-12 | 2013-10-04 | 14 | 0d |  |  | 5280h |
| 37 | 1.4.4.1 | Контроль и корректировка технических решений "Архитектурный комитет" |  | 40d | 2013-08-12 | 2013-10-04 | 34, 35 | 0d |  | Конструктор 1; Андрей Пирожков; Денис Митавский; WEB-дизайнер; Аналитик | 1600h |
| 38 | 1.4.4.2 | **Разработка серверной логики модуля Канцелярия** |  | 40d | 2013-08-12 | 2013-10-04 | 9 | 0d |  |  | 1600h |
| 39 | 1.4.4.2.1 | Разработка схем документов модуля КАНЦЕЛЯРИЯ |  | 20d | 2013-08-12 | 2013-09-06 |  | 0d |  | Java разработчик2; Java разработчик | 320h |
| 40 | 1.4.4.2.2 | Разработка ЖЦ процессов модуля (WF) |  | 20d | 2013-09-09 | 2013-10-04 | 39 | 0d |  | Java разработчик2; Java разработчик | 320h |
| 41 | 1.4.4.2.3 | Разработка логики бизнес- действий модуля "Канцелярия" |  | 40d | 2013-08-12 | 2013-10-04 |  | 0d |  | Java разработчик1; Java разработчик | 640h |
| 42 | 1.4.4.2.4 | Разработка процессов автоматизации для модуля "канцелярия" |  | 20d | 2013-08-12 | 2013-09-06 |  | 20d |  | Java разработчик | 160h |
| 43 | 1.4.4.2.5 | Разработка модели прав доступа (контекстные роли) |  | 20d | 2013-09-09 | 2013-10-04 | 39 | 0d |  | Java разработчик | 160h |
| 44 | 1.4.4.3 | **Разработка клиентской логики модуля "канцелярия"** |  | 40d | 2013-08-12 | 2013-10-04 | 9 | 0d |  |  | 640h |
| 45 | 1.4.4.3.1 | Разработка форм для работы с документами в GUI (настройки форм) |  | 20d | 2013-08-12 | 2013-09-06 |  | 20d |  | Java разработчик3 | 160h |
| 46 | 1.4.4.3.2 | Разработка структуры рабочего места |  | 20d | 2013-09-09 | 2013-10-04 | 39 | 0d |  | Java разработчик3 | 160h |
| 47 | 1.4.4.3.3 | Разработка специфичных для модуля форм элементов GUI |  | 40d | 2013-08-12 | 2013-10-04 |  | 0d |  | Java разработчик4 | 320h |
| 48 | 1.4.4.4 | **Подготовка работы со списками значений** |  | 40d | 2013-08-12 | 2013-10-04 |  | 0d |  |  | 640h |
| 49 | 1.4.4.4.1 | Разработка функционала учета организационно штатной структуры |  | 40d | 2013-08-12 | 2013-10-04 | 9 | 0d |  | Андрей Цветков | 320h |
| 50 | 1.4.4.4.2 | Разработка функционала с рубрикаторами (сложные справочники) |  | 20d | 2013-08-12 | 2013-09-06 | 9 | 0d |  | Валерий Мацукевич | 160h |
| 51 | 1.4.4.4.3 | Разработка функционала для работы с словарями данных (просте, линейные справочники) |  | 20d | 2013-09-09 | 2013-10-04 | 9, 50 | 0d |  | Валерий Мацукевич | 160h |
| 52 | 1.4.4.5 | Адаптация компонент сканирования (СПО) |  | 20d | 2013-08-12 | 2013-09-06 | 9 | 218d | 0d | Java разработчик | 160h |
| 53 | 1.4.4.6 | Подготовка отчетов |  | 20d | 2013-09-09 | 2013-10-04 | 9, 39, 52 | 218d |  | Java разработчик | 160h |
| 54 | 1.4.4.7 | Разработка "ЕЖЕДНЕВНИКА" для модуля "КАНЦЕЛЯРИЯ" |  | 30d | 2013-08-26 | 2013-10-04 | 9FS+10d | 218d |  | Java разработчик5; Java разработчик | 480h |
| 55 | 1.4.5 | Сборка прототипа модуля "Канцелярия" завершена | milestone | 0d | 2013-10-04 | 2013-10-04 | 38, 44, 48 | 0d |  |  |  |
| 56 | 1.4.6 | **Тестирование** |  | 70d? | 2013-08-12 | 2013-11-15 | 9 | 2d | 0d |  | 2648h |
| 57 | 1.4.6.1 | **Функциональное тестирование** |  | 55d? | 2013-08-12 | 2013-10-25 |  | 2d |  |  | 2024h |
| 58 | 1.4.6.1.1 | Подготовка ПМИ |  | 5d | 2013-08-12 | 2013-08-16 |  | 2d | 0d | Тест Аналитик | 40h |
| 59 | 1.4.6.1.2 | Разработка "сценариев тестирования" |  | 15d | 2013-08-12 | 2013-08-30 |  | 2d | 0d | Тест Аналитик | 120h |
| 60 | 1.4.6.1.3 | Разработка модели нагрузки для тестирования |  | 10d | 2013-08-19 | 2013-08-30 | 58 | 2d | 0d | Тест Аналитик | 80h |

| ID | WBS | Task | Type | Duration | Start | Finish | Predecessors | Total slack | Free slack | Constraint | Resources | Work |
| --- | --- | --- | --- | --- | --- | --- | --- | --- | --- | --- | --- | --- |
| 61 | 1.4.6.1.4 | **Проведение тестирования** |  | 40d? | 2013-09-02 | 2013-10-25 | 59, 60 | 2d |  |  |  | 1784h |
| 62 | 1.4.6.1.4.1 | **Подготовка среды тестирования** |  | 15d? | 2013-09-02 | 2013-09-20 |  | 2d |  |  |  | 200h |
| 63 | 1.4.6.1.4.1.1 | Разворачивание системы |  | 5d? | 2013-09-02 | 2013-09-06 |  | 2d | 0d |  | Java разработчик | 40h |
| 64 | 1.4.6.1.4.1.2 | Наполнение данными |  | 10d? | 2013-09-09 | 2013-09-20 | 63 | 2d | 0d |  | Java разработчик; Java разработчик6 | 160h |
| 65 | 1.4.6.1.4.2 | Среда тестирования готова | milestone | 0d | 2013-09-20 | 2013-09-20 | 64 | 2d | 0d | start no earlier than 2012-05-24 |  |  |
| 66 | 1.4.6.1.4.3 | Проведение тестирования |  | 10d | 2013-09-23 | 2013-10-04 | 65 | 2d | 0d |  | Тест Аналитик; Тестировщик [200%] | 240h |
| 67 | 1.4.6.1.4.4 | **Обработка результатов тестирования и внесение изменений в модуль** |  | 15d | 2013-10-07 | 2013-10-25 | 55, 66FS-2d | 0d |  |  |  | 1344h |
| 68 | 1.4.6.1.4.4.1 | Устранение замечаний по результатам функционального тестирования |  | 15d | 2013-10-07 | 2013-10-25 |  | 0d |  |  | Java разработчик5; Java разработчик [300%]; Валерий Мацукевич; Java разработчик3; Java разработчик4; Java разработчик2; Java разработчик1; Андрей Цветков | 1200h |
| 69 | 1.4.6.1.4.4.2 | Проверка устранения замечаний |  | 6d | 2013-10-18 | 2013-10-25 | 68FS-6d | 2d | 0d |  | Тест Аналитик; Тестировщик [200%] | 144h |
| 70 | 1.4.6.2 | **Нагрузочное тестирование** |  | 65d | 2013-08-19 | 2013-11-15 | 58 | 2d | 0d |  |  | 624h |
| 71 | 1.4.6.2.1 | Подготовка автоматизированных сценариев для создания нагрузки |  | 38d | 2013-08-19 | 2013-10-09 |  | 14d | 12d |  | Java разработчик | 304h |
| 72 | 1.4.6.2.2 | Стенд для нагрузочного тестирования подготовлен | milestone | 0d | 2013-10-04 | 2013-10-04 | 66 | 17d | 15d | finish no earlier than 2012-06-09 |  |  |
| 73 | 1.4.6.2.3 | Проведения нагрузочного тестирования |  | 10d | 2013-10-28 | 2013-11-08 | 69, 71, 72 | 2d | 0d |  | Java разработчик; Тест Аналитик; Тестировщик | 240h |
| 74 | 1.4.6.2.4 | Обработка результатов нагрузочного тестирования |  | 5d | 2013-11-11 | 2013-11-15 | 73 | 2d |  |  | Тест Аналитик; Тестировщик | 80h |
| 75 | 1.4.7 | Разработка модуля "Канцелярия" завершена | milestone | 0d | 2013-11-15 | 2013-11-15 | 56 | 188d |  |  |  |  |
| 76 | 1.4.8 | **Подготовка документации** |  | 40d | 2013-08-12 | 2013-10-04 | 56SS | 0d |  |  |  | 320h |
| 77 | 1.4.8.1 | Разработка документа "Концепция системы " |  | 20d | 2013-08-12 | 2013-09-06 |  | 0d |  |  | Владимир Панов | 160h |
| 78 | 1.4.8.2 | Разработка "Software Architecture Document" |  | 20d | 2013-09-09 | 2013-10-04 | 77 | 0d |  |  | Владимир Панов | 160h |
| 79 | 1.4.8.3 | Документы подготовлены | milestone | 0d | 2013-10-04 | 2013-10-04 | 78 | 0d |  |  |  |  |
| 80 | 1.5 | **Создание модулей первой очереди** |  | 88d? | 2013-10-04 | 2014-02-05 |  | 0d |  |  |  | 9368h |
| 81 | 1.5.1 | Определен состав модулей первой очереди и первичные требования подготовлены | milestone | 0d | 2013-10-04 | 2013-10-04 | 79 | 0d |  | finish no earlier than 2012-04-02 |  |  |
| 82 | 1.5.2 | **Проектирование** |  | 15d | 2013-10-07 | 2013-10-25 | 81 | 0d |  |  |  | 480h |
| 83 | 1.5.2.1 | Определение структуры модулей первой очереди |  | 13d | 2013-10-07 | 2013-10-23 | 37 | 0d |  |  | Андрей Пирожков; Конструктор 1; Денис Митавский; WEB-дизайнер | 416h |
| 84 | 1.5.2.2 | Уточнение состава и сроков работ |  | 2d | 2013-10-24 | 2013-10-25 | 83 | 0d |  |  | Конструктор 1; Андрей Пирожков; Денис Митавский; WEB-дизайнер | 64h |
| 85 | 1.5.3 | Принято решение о разработке модулей второй очереди | milestone | 0d | 2013-10-25 | 2013-10-25 | 68, 83 | 0d |  | finish no earlier than 2012-05-21 |  |  |

| ID | WBS | Task | Type | Duration | Start | Finish | Predecessors | Total slack | Free slack | Resources | Work |
| --- | --- | --- | --- | --- | --- | --- | --- | --- | --- | --- | --- |
| 86 | 1.5.4 | **Разработка** |  | 40d | 2013-10-28 | 2013-12-20 | 85 | 0d |  |  | 6080h |
| 87 | 1.5.4.1 | Контроль и корректировка технических решений "Архитектурный комитет" |  | 40d | 2013-10-28 | 2013-12-20 |  | 132d | 15d | Конструктор 1; Андрей Пирожков; Денис Митавский; WEB-дизайнер | 1280h |
| 88 | 1.5.4.2 | **Разработка серверной логики модулей первой очереди** |  | 40d | 2013-10-28 | 2013-12-20 |  | 0d |  |  | 1600h |
| 89 | 1.5.4.2.1 | Разработка схем документов для модулей первой очереди |  | 20d | 2013-10-28 | 2013-11-22 |  | 0d |  | Java разработчик2; Java разработчик | 320h |
| 90 | 1.5.4.2.2 | Разработка ЖЦ процессов (WF) |  | 20d | 2013-11-25 | 2013-12-20 | 89 | 0d |  | Java разработчик2; Java разработчик | 320h |
| 91 | 1.5.4.2.3 | Разработка логики бизнес- действий для модулей первой очереди |  | 40d | 2013-10-28 | 2013-12-20 |  | 0d |  | Java разработчик1; Java разработчик | 640h |
| 92 | 1.5.4.2.4 | Разработка процессов автоматизации для модулей первой очереди |  | 20d | 2013-10-28 | 2013-11-22 |  | 20d |  | Java разработчик | 160h |
| 93 | 1.5.4.2.5 | Разработка модели прав доступа (контекстные роли) |  | 20d | 2013-11-25 | 2013-12-20 | 89 | 0d |  | Java разработчик | 160h |
| 94 | 1.5.4.3 | **Разработка клиентской логики модулей первой очереди** |  | 40d | 2013-10-28 | 2013-12-20 |  | 0d |  |  | 640h |
| 95 | 1.5.4.3.1 | Разработка форм для работы с документами в GUI (настройки форм) |  | 20d | 2013-10-28 | 2013-11-22 |  | 20d |  | Java разработчик3 | 160h |
| 96 | 1.5.4.3.2 | Разработка структуры рабочего места |  | 20d | 2013-11-25 | 2013-12-20 | 89 | 0d |  | Java разработчик3 | 160h |
| 97 | 1.5.4.3.3 | Разработка специфичных для модуля форм элементов GUI |  | 40d | 2013-10-28 | 2013-12-20 |  | 0d |  | Java разработчик4 | 320h |
| 98 | 1.5.4.4 | **Разработка вспомогательного инструментария** |  | 40d | 2013-10-28 | 2013-12-20 |  | 0d |  |  | 1280h |
| 99 | 1.5.4.4.1 | Построитель форм |  | 40d | 2013-10-28 | 2013-12-20 | 82 | 0d |  | Андрей Цветков | 320h |
| 100 | 1.5.4.4.2 | Разработка инсталлятора |  | 40d | 2013-10-28 | 2013-12-20 | 82 | 0d |  | Валерий Мацукевич | 320h |
| 101 | 1.5.4.4.3 | Разработка конфигуратора |  | 40d | 2013-10-28 | 2013-12-20 | 82 | 0d |  | Java разработчик5; Java разработчик | 640h |
| 102 | 1.5.4.5 | Подготовка отчетов |  | 40d | 2013-10-28 | 2013-12-20 |  | 132d |  | Java разработчик | 320h |
| 103 | 1.5.4.6 | Подготовка модуля для работы с УИП |  | 40d | 2013-10-28 | 2013-12-20 | 101SS | 132d |  | Java разработчик [300%] | 960h |
| 104 | 1.5.5 | Сборка модулей первой очереди завершена | milestone | 0d | 2013-12-20 | 2013-12-20 | 88, 94, 98 | 0d |  |  |  |
| 105 | 1.5.6 | **Тестирование** |  | 58d? | 2013-11-18 | 2014-02-05 | 70 | 2d | 0d |  | 2648h |
| 106 | 1.5.6.1 | **Функциональное тестирование** |  | 40d? | 2013-11-18 | 2014-01-10 |  | 2d |  |  | 2024h |
| 107 | 1.5.6.1.1 | Подготовка ПМИ |  | 5d | 2013-11-18 | 2013-11-22 |  | 130d | 0d | Тест Аналитик | 40h |
| 108 | 1.5.6.1.2 | Разработка "сценариев тестирования" |  | 15d | 2013-11-18 | 2013-12-06 |  | 2d | 0d | Тест Аналитик | 120h |
| 109 | 1.5.6.1.3 | Разработка модели нагрузки для тестирования |  | 10d | 2013-11-25 | 2013-12-06 | 107 | 173d |  | Тест Аналитик | 80h |

| ID | WBS | Task | Type | Duration | Start | Finish | Predecessors | Baseline start | Baseline finish | Baseline duration | Total slack | Free slack | Constraint | Resources | Work | Baseline cost |
| --- | --- | --- | --- | --- | --- | --- | --- | --- | --- | --- | --- | --- | --- | --- | --- | --- |
| 110 | 1.5.6.1.4 | **Проведение тестирования** |  | 40d? | 2013-11-18 | 2014-01-10 |  |  |  |  | 2d |  |  |  | 1784h |  |
| 111 | 1.5.6.1.4.1 | **Подготовка среды тестирования** |  | 15d? | 2013-11-18 | 2013-12-06 |  |  |  |  | 2d |  |  |  | 200h |  |
| 112 | 1.5.6.1.4.1.1 | Разворачивание системы |  | 5d? | 2013-11-18 | 2013-11-22 |  |  |  |  | 2d | 0d |  | Java разработчик | 40h |  |
| 113 | 1.5.6.1.4.1.2 | Наполнение данными |  | 10d? | 2013-11-25 | 2013-12-06 | 112 |  |  |  | 2d | 0d |  | Java разработчик; Java разработчик6 | 160h |  |
| 114 | 1.5.6.1.4.2 | Среда тестирования готова | milestone | 0d | 2013-12-06 | 2013-12-06 | 108, 113 |  |  |  | 2d | 0d | finish no earlier than 2012-06-09 |  |  |  |
| 115 | 1.5.6.1.4.3 | Проведение тестирования |  | 10d | 2013-12-09 | 2013-12-20 | 114 |  |  |  | 2d | 0d |  | Тест Аналитик; Тестировщик [200%] | 240h |  |
| 116 | 1.5.6.1.4.4 | **Обработка результатов тестирования и внесение изменений в модуль** |  | 15d | 2013-12-23 | 2014-01-10 | 104, 115FS-2d |  |  |  | 0d |  |  |  | 1344h |  |
| 117 | 1.5.6.1.4.4.1 | Устранение замечаний по результатам функционального тестирования |  | 15d | 2013-12-23 | 2014-01-10 |  |  |  |  | 0d |  |  | Java разработчик5; Java разработчик [300%]; Валерий Мацукевич; Java разработчик3; Java разработчик4; Java разработчик2; Java разработчик1; Андрей Цветков | 1200h |  |
| 118 | 1.5.6.1.4.4.2 | Проверка устранения замечаний |  | 6d | 2014-01-03 | 2014-01-10 | 117FS-6d |  |  |  | 22d | 0d |  | Тест Аналитик; Тестировщик [200%] | 144h |  |
| 119 | 1.5.6.2 | **Нагрузочное тестирование** |  | 53d | 2013-11-25 | 2014-02-05 | 107 |  |  |  | 130d |  |  |  | 624h |  |
| 120 | 1.5.6.2.1 | Подготовка автоматизированных сценариев для создания нагрузки |  | 38d | 2013-11-25 | 2014-01-15 |  |  |  |  | 130d | 0d |  | Java разработчик | 304h |  |
| 121 | 1.5.6.2.2 | Стенд для нагрузочного тестирования подготовлен | milestone | 0d | 2013-12-20 | 2013-12-20 | 115 |  |  |  | 148d | 18d | finish no earlier than 2012-06-09 |  |  |  |
| 122 | 1.5.6.2.3 | Проведения нагрузочного тестирования |  | 10d | 2014-01-16 | 2014-01-29 | 118, 120, 121 |  |  |  | 130d | 0d |  | Java разработчик; Тест Аналитик; Тестировщик | 240h |  |
| 123 | 1.5.6.2.4 | Обработка результатов нагрузочного тестирования |  | 5d | 2014-01-30 | 2014-02-05 | 122 |  |  |  | 130d |  |  | Тест Аналитик; Тестировщик | 80h |  |
| 124 | 1.5.7 | Разработка модулей первой очереди завершена | milestone | 0d | 2014-02-05 | 2014-02-05 | 105 |  |  |  | 130d |  |  |  |  |  |
| 125 | 1.5.8 | **Подготовка документации** |  | 40d | 2013-11-18 | 2014-01-10 | 105SS |  |  |  | 30d | 5d |  |  | 160h |  |
| 126 | 1.5.8.1 | Разработка "Software Architecture Document" для модулей первой очереди |  | 20d | 2013-11-18 | 2013-12-13 |  |  |  |  | 50d | 20d |  | Технический писатель | 160h |  |
| 127 | 1.5.8.2 | Документы подготовлены | milestone | 0d | 2014-01-10 | 2014-01-10 | 118, 126 |  |  |  | 30d |  |  |  |  |  |
| 128 | 1.6 | **Проверка работоспособности решения - Организация демонстрации** |  | 31d? | 2013-12-23 | 2014-02-03 | 86 |  |  |  | 132d |  |  |  | 496h |  |
| 129 | 1.6.1 | Подготовка стенда |  | 3d | 2013-12-23 | 2013-12-25 |  |  |  |  | 132d | 0d |  | Java разработчик; Аналитик | 48h |  |
| 130 | 1.6.2 | разработка прототипа |  | 20d? | 2013-12-26 | 2014-01-22 | 129 |  |  |  | 132d | 0d |  | Java разработчик; Аналитик | 320h |  |
| 131 | 1.6.3 | Проведение демонстраций |  | 6d | 2014-01-23 | 2014-01-30 | 130 |  |  |  | 132d | 0d |  | Java разработчик; Аналитик | 96h |  |
| 132 | 1.6.4 | Анализ результатов - выводы |  | 2d | 2014-01-31 | 2014-02-03 | 131 |  |  |  | 132d |  |  | Java разработчик; Аналитик | 32h |  |
| 133 | 1.7 | **Подготовка документации для тиражирования CM5 v2** |  | 244d? | 2013-04-22 | 2014-04-03 | 2 | 2012-02-02 | 2012-03-30 | 0d? | 89d |  |  |  | 4071.6h | 342,000 |
| 134 | 1.7.1 | Подготовка стенда для документирования |  | 5d? | 2013-04-22 | 2013-04-26 |  | 2012-02-02 | 2012-02-08 | 5d? | 89d | 0d | start no earlier than 2012-02-02 | Технолог - администратор | 40h | 15,000 |
| 135 | 1.7.2 | Подготовка документации по обновленному функционалу BR4J (регионалка) |  | 19d | 2013-04-29 | 2013-05-30 | 134 | 2012-02-02 | 2012-02-28 | 18d? | 89d | 0d | start no earlier than 2012-02-06 | Технический писатель2 [50%]; Системный аналитик1 [50%] | 168h | 85,000 |

| ID | WBS | Task | Duration | Start | Finish | Predecessors | Baseline start | Baseline finish | Baseline duration | Total slack | Free slack | Resources | Work | Baseline cost |
| --- | --- | --- | --- | --- | --- | --- | --- | --- | --- | --- | --- | --- | --- | --- |
| 136 | 1.7.3 | **Описание функциональных особенностей системы** | 220d? | 2013-05-31 | 2014-04-03 | 135 | 2012-02-29 | 2012-03-30 | 0d? | 89d |  | Технический писатель2; Системный аналитик1; Системный аналитик2 [50%]; Системный аналитик3 [50%] | 3863.6h | 242,000 |
| 137 | 1.7.3.1 | Подготовка спецификации | 22d | 2013-05-31 | 2013-07-01 |  |  |  |  | 89d | 0d | Системный аналитик2; Системный аналитик3 [50%]; Системный аналитик4 [50%] | 274h |  |
| 138 | 1.7.3.2 | Подготовка описания типового функционала | 3.5d | 2013-07-02 | 2013-07-05 | 137 |  |  |  | 89d | 0d | Системный аналитик2 [50%]; Системный аналитик3 [50%]; Системный аналитик4 [50%] | 32h |  |
| 139 | 1.7.3.3 | Подготовка описания типового функционала (Апрель) | 10d | 2013-07-08 | 2013-07-19 | 138 |  |  |  | 273d |  | Системный аналитик2; Системный аналитик4 [20%] | 96h |  |
| 140 | 1.7.3.4 | **Подготовка руководства по администрированию и установке** | 220d? | 2013-05-31 | 2014-04-03 |  |  |  |  | 89d |  |  | 3041.6h |  |
| 141 | 1.7.3.4.1 | Подготовка руководства администратора | 7d | 2013-05-31 | 2013-06-10 |  |  |  |  | 115d | 0d | Системный аналитик1 | 56h |  |
| 142 | 1.7.3.4.2 | Подготовка руководства по установке | 7d | 2013-06-11 | 2013-06-19 | 141 |  |  |  | 115d | 26d | Системный аналитик1 | 56h |  |
| 143 | 1.7.3.4.3 | Консультирование по вопросам администрирования и установке стенда | 14d | 2013-07-08 | 2013-07-25 | 138 |  |  |  | 89d | 0d | Технолог - администратор [50%] | 56h |  |
| 144 | 1.7.3.4.4 | Рецензирование руководства администратора и руководства по установке | 2d | 2013-07-26 | 2013-07-29 | 142, 143 |  |  |  | 89d | 0d | Технический писатель2 | 16h |  |
| 145 | 1.7.3.4.5 | Проверка комплектности | 1d | 2013-07-30 | 2013-07-30 | 144 |  |  |  | 266d |  | Системный аналитик1 | 8h |  |
| 146 | 1.7.3.4.6 | Поддержка и сопровождение работы стенда | 50d | 2013-05-31 | 2013-08-08 |  |  |  |  | 259d |  | Технолог - администратор [10%] | 40h |  |
| 147 | 1.7.3.4.7 | Подготовка описания функционала | 21d? | 2013-07-30 | 2013-08-27 | 144 |  |  |  | 89d | 0d | Системный аналитик2; Системный аналитик1 | 336h |  |
| 148 | 1.7.3.4.8 | Разработка «Программа и методика испытаний (ПМИ)» | 21d? | 2013-08-28 | 2013-09-25 | 147 |  |  |  | 89d | 0d | Системный аналитик2; Системный аналитик1 | 336h |  |
| 149 | 1.7.3.4.9 | Рецензирование руководств | 15d | 2013-09-05 | 2013-09-25 | 147, 148FF |  |  |  | 89d | 0d |  |  |  |
| 150 | 1.7.3.4.10 | **Эксплуатационная документация** | 107d? | 2013-09-26 | 2014-02-21 | 149 |  |  |  | 89d |  |  | 1880h |  |
| 151 | 1.7.3.4.10.1 | Разработка «Руководство по установке» (РУ) | 21d | 2013-09-26 | 2013-10-24 |  |  |  |  | 89d | 0d | Системный аналитик2; Системный аналитик1 | 336h |  |
| 152 | 1.7.3.4.10.2 | Разработка «Руководство пользователя» (РП) | 21d? | 2013-10-25 | 2013-11-22 | 151 |  |  |  | 89d | 0d | Системный аналитик2; Системный аналитик1 | 336h |  |
| 153 | 1.7.3.4.10.3 | Разработка «Руководство по администрированию» (РА ) | 23d | 2013-11-25 | 2013-12-25 | 152 |  |  |  | 89d | 0d | Системный аналитик2; Системный аналитик1 | 368h |  |
| 154 | 1.7.3.4.10.4 | Рецензирование руководств | 15d | 2013-12-05 | 2013-12-25 | 152, 153FF |  |  |  | 89d | 0d |  |  |  |
| 155 | 1.7.3.4.10.5 | Доработка РП, РА, РУ | 11d | 2013-12-26 | 2014-01-09 | 154 |  |  |  | 89d | 0d | Технический писатель2; Системный аналитик2; Системный аналитик1 | 264h |  |
| 156 | 1.7.3.4.10.6 | **Разработка инструкций** | 31d? | 2014-01-10 | 2014-02-21 | 155 |  |  |  | 89d |  |  | 576h |  |
| 157 | 1.7.3.4.10.6.1 | Разработка инструкций по типам документов | 21d? | 2014-01-10 | 2014-02-07 |  |  |  |  | 89d | 0d | Системный аналитик2 | 168h |  |
| 158 | 1.7.3.4.10.6.2 | Разработка инструкций по ролям | 21d? | 2014-01-10 | 2014-02-07 |  |  |  |  | 89d | 0d | Системный аналитик1 | 168h |  |
| 159 | 1.7.3.4.10.6.3 | Разработка инструкции по работе в АРМ (общая и по ролям) | 10d? | 2014-02-10 | 2014-02-21 | 157, 158 |  |  |  | 89d | 0d | Системный аналитик2; Системный аналитик1 | 160h |  |
| 160 | 1.7.3.4.10.6.4 | Рецензирование инструкций | 10d? | 2014-02-10 | 2014-02-21 | 159FF |  |  |  | 89d | 0d | Технический писатель2 | 80h |  |

| ID | WBS | Task | Type | Duration | Start | Finish | Predecessors | Total slack | Free slack | Resources | Work |
| --- | --- | --- | --- | --- | --- | --- | --- | --- | --- | --- | --- |
| 161 | 1.7.3.4.11 | **Технологическая документация** |  | 13d | 2014-02-24 | 2014-03-12 | 160 | 89d |  |  | 104h |
| 162 | 1.7.3.4.11.1 | Разработка «Описание архитектуры системы» |  | 10d | 2014-02-24 | 2014-03-07 |  | 89d | 0d | Системный аналитик2 | 80h |
| 163 | 1.7.3.4.11.2 | Форматирование «Описание архитектуры системы» |  | 3d | 2014-03-10 | 2014-03-12 | 162 | 89d | 0d | Системный аналитик2 | 24h |
| 164 | 1.7.3.4.12 | **Внедренческая документация** |  | 16d? | 2014-03-13 | 2014-04-03 | 163 | 89d |  |  | 153.6h |
| 165 | 1.7.3.4.12.1 | Разработка типового ТКП |  | 10d? | 2014-03-13 | 2014-03-26 |  | 89d | 0d | Технический писатель2 [20%]; Системный аналитик2 | 96h |
| 166 | 1.7.3.4.12.2 | Разработка типового ТЗ |  | 6d? | 2014-03-27 | 2014-04-03 | 165 | 89d |  | Системный аналитик2; Технический писатель2 [20%] | 57.6h |
| 167 | 1.8 | **Создание модулей второй очереди** |  | 85d? | 2013-12-23 | 2014-04-18 |  | 15d |  |  | 8408h |
| 168 | 1.8.1 | Определен состав модулей второй очереди и первичные требования подготовлены | milestone | 0d | 2013-12-23 | 2013-12-23 | 169SF | 163d |  |  |  |
| 169 | 1.8.2 | **Проектирование** |  | 15d | 2013-12-23 | 2014-01-13 |  | 148d | 0d |  | 480h |
| 170 | 1.8.2.1 | Определение структуры модулей второй очереди |  | 13d | 2013-12-23 | 2014-01-09 | 171SF | 150d |  | Андрей Пирожков; Конструктор 1; Денис Митавский; WEB-дизайнер | 416h |
| 171 | 1.8.2.2 | Уточнение состава и сроков работ |  | 2d | 2014-01-09 | 2014-01-13 | 172SF | 148d | 0d | Конструктор 1; Андрей Пирожков; Денис Митавский; WEB-дизайнер | 64h |
| 172 | 1.8.2.3 | Принято решение о разработке модулей второй очереди | milestone | 0d | 2014-01-13 | 2014-01-13 | 87, 174SS | 148d | 0d |  |  |
| 173 | 1.8.3 | **Разработка** |  | 40d | 2014-01-13 | 2014-03-07 | 117 | 0d |  |  | 5120h |
| 174 | 1.8.3.1 | Контроль и корректировка технических решений "Архитектурный комитет" |  | 40d | 2014-01-13 | 2014-03-07 |  | 108d | 0d | Конструктор 1; Андрей Пирожков; Денис Митавский; WEB-дизайнер | 1280h |
| 175 | 1.8.3.2 | **Разработка серверной логики модулей второй очереди** |  | 40d | 2014-01-13 | 2014-03-07 |  | 0d |  |  | 1600h |
| 176 | 1.8.3.2.1 | Разработка схем документов для модулей второй очереди |  | 20d | 2014-01-13 | 2014-02-07 |  | 0d |  | Java разработчик2; Java разработчик | 320h |
| 177 | 1.8.3.2.2 | Разработка ЖЦ процессов (WF) |  | 20d | 2014-02-10 | 2014-03-07 | 176 | 0d |  | Java разработчик2; Java разработчик | 320h |
| 178 | 1.8.3.2.3 | Разработка логики бизнес- действий для модулей второй очереди |  | 40d | 2014-01-13 | 2014-03-07 |  | 0d |  | Java разработчик1; Java разработчик | 640h |
| 179 | 1.8.3.2.4 | Разработка процессов автоматизации для модулей второй очереди |  | 20d | 2014-01-13 | 2014-02-07 |  | 20d |  | Java разработчик | 160h |
| 180 | 1.8.3.2.5 | Разработка модели прав доступа (контекстные роли) |  | 20d | 2014-02-10 | 2014-03-07 | 176 | 0d |  | Java разработчик | 160h |
| 181 | 1.8.3.3 | **Разработка клиентской логики модулей второй очереди** |  | 40d | 2014-01-13 | 2014-03-07 |  | 0d |  |  | 640h |
| 182 | 1.8.3.3.1 | Разработка форм для работы с документами в GUI (настройки форм) |  | 20d | 2014-01-13 | 2014-02-07 |  | 20d |  | Java разработчик3 | 160h |
| 183 | 1.8.3.3.2 | Разработка структуры рабочего места |  | 20d | 2014-02-10 | 2014-03-07 | 176 | 0d |  | Java разработчик3 | 160h |
| 184 | 1.8.3.3.3 | Разработка специфичных для модуля форм элементов GUI |  | 40d | 2014-01-13 | 2014-03-07 |  | 0d |  | Java разработчик4 | 320h |

| ID | WBS | Task | Type | Duration | Start | Finish | Predecessors | Total slack | Free slack | Constraint | Resources | Work |
| --- | --- | --- | --- | --- | --- | --- | --- | --- | --- | --- | --- | --- |
| 185 | 1.8.3.4 | **Разработка вспомогательного инструментария** |  | 40d | 2014-01-13 | 2014-03-07 |  | 0d |  |  |  | 1280h |
| 186 | 1.8.3.4.1 | Доработка "Построителя форм" |  | 40d | 2014-01-13 | 2014-03-07 |  | 0d |  |  | Андрей Цветков | 320h |
| 187 | 1.8.3.4.2 | Доработка "Инсталлятора" |  | 40d | 2014-01-13 | 2014-03-07 |  | 0d |  |  | Валерий Мацукевич | 320h |
| 188 | 1.8.3.4.3 | Доработка "Конфигуратора" |  | 40d | 2014-01-13 | 2014-03-07 |  | 0d |  |  | Java разработчик5; Java разработчик | 640h |
| 189 | 1.8.3.5 | Подготовка отчетов для второй очереди модулей |  | 40d | 2014-01-13 | 2014-03-07 |  | 108d |  |  | Java разработчик | 320h |
| 190 | 1.8.4 | Сборка модулей второй очереди завершена | milestone | 0d | 2014-03-07 | 2014-03-07 | 175, 181, 185 | 0d |  |  |  |  |
| 191 | 1.8.5 | **Тестирование** |  | 70d? | 2014-01-13 | 2014-04-18 | 116 | 22d | 0d |  |  | 2648h |
| 192 | 1.8.5.1 | **Функциональное тестирование** |  | 55d? | 2014-01-13 | 2014-03-28 |  | 22d |  |  |  | 2024h |
| 193 | 1.8.5.1.1 | Подготовка ПМИ |  | 5d | 2014-01-13 | 2014-01-17 |  | 22d | 0d |  | Тест Аналитик | 40h |
| 194 | 1.8.5.1.2 | Разработка "сценариев тестирования" |  | 15d | 2014-01-13 | 2014-01-31 |  | 25d | 0d |  | Тест Аналитик | 120h |
| 195 | 1.8.5.1.3 | Разработка модели нагрузки для тестирования |  | 10d | 2014-01-20 | 2014-01-31 | 125, 193 | 25d | 0d |  | Тест Аналитик | 80h |
| 196 | 1.8.5.1.4 | **Проведение тестирования** |  | 40d? | 2014-02-03 | 2014-03-28 | 194, 195 | 25d |  |  |  | 1784h |
| 197 | 1.8.5.1.4.1 | **Подготовка среды тестирования** |  | 10d? | 2014-02-03 | 2014-02-14 |  | 30d |  |  |  | 200h |
| 198 | 1.8.5.1.4.1.1 | Разворачивание системы |  | 5d? | 2014-02-03 | 2014-02-07 | 199SF | 128d |  |  | Java разработчик | 40h |
| 199 | 1.8.5.1.4.1.2 | Наполнение данными |  | 10d? | 2014-02-03 | 2014-02-14 |  | 30d | 0d |  | Java разработчик; Java разработчик6 | 160h |
| 200 | 1.8.5.1.4.2 | Среда тестирования готова | milestone | 0d | 2014-02-14 | 2014-02-14 | 199 | 30d | 0d |  |  |  |
| 201 | 1.8.5.1.4.3 | Проведение тестирования |  | 10d | 2014-02-17 | 2014-02-28 | 200 | 30d | 0d |  | Тест Аналитик; Тестировщик [200%] | 240h |
| 202 | 1.8.5.1.4.4 | **Обработка результатов тестирования и внесение изменений в модуль** |  | 15d | 2014-03-10 | 2014-03-28 | 190 | 0d |  |  |  | 1344h |
| 203 | 1.8.5.1.4.4.1 | Устранение замечаний по результатам функционального тестирования |  | 15d | 2014-03-10 | 2014-03-28 |  | 0d |  |  | Java разработчик5; Java разработчик [300%]; Валерий Мацукевич; Java разработчик3; Java разработчик4; Java разработчик2; Java разработчик1; Андрей Цветков | 1200h |
| 204 | 1.8.5.1.4.4.2 | Проверка устранения замечаний |  | 6d | 2014-03-21 | 2014-03-28 | 203FS-6d | 0d |  |  | Тест Аналитик; Тестировщик [200%] | 144h |
| 205 | 1.8.5.2 | **Нагрузочное тестирование** |  | 65d | 2014-01-20 | 2014-04-18 | 193 | 10d | 0d |  |  | 624h |
| 206 | 1.8.5.2.1 | Подготовка автоматизированных сценариев для создания нагрузки |  | 38d | 2014-01-20 | 2014-03-12 |  | 22d | 12d |  | Java разработчик | 304h |
| 207 | 1.8.5.2.2 | Стенд для нагрузочного тестирования подготовлен | milestone | 0d | 2014-02-28 | 2014-02-28 | 201 | 30d | 20d | finish no earlier than 2012-06-09 |  |  |
| 208 | 1.8.5.2.3 | Проведения нагрузочного тестирования |  | 10d | 2014-03-31 | 2014-04-11 | 204, 206, 207 | 10d | 0d |  | Java разработчик; Тест Аналитик; Тестировщик | 240h |
| 209 | 1.8.5.2.4 | Обработка результатов нагрузочного тестирования |  | 5d | 2014-04-14 | 2014-04-18 | 208 | 10d |  |  | Тест Аналитик; Тестировщик | 80h |
| 210 | 1.8.6 | Разработка модулей второй очереди завершена | milestone | 0d | 2014-04-18 | 2014-04-18 | 191 | 78d |  |  |  |  |

| ID | WBS | Task | Type | Duration | Start | Finish | Predecessors | Total slack | Free slack | Resources | Work |
| --- | --- | --- | --- | --- | --- | --- | --- | --- | --- | --- | --- |
| 211 | 1.8.7 | **Подготовка документации** |  | 55d | 2014-01-13 | 2014-03-28 | 191SS | 93d |  |  | 160h |
| 212 | 1.8.7.1 | Разработка "Software Architecture Document" для модулей второй очереди |  | 20d | 2014-01-13 | 2014-02-07 |  | 128d | 35d | Технический писатель | 160h |
| 213 | 1.8.7.2 | Документы подготовлены | milestone | 0d | 2014-03-28 | 2014-03-28 | 204, 212 | 93d |  |  |  |
| 214 | 1.9 | **Создание модулей третьей очереди** |  | 108d? | 2014-03-10 | 2014-08-06 |  | 0d |  |  | 10440h |
| 215 | 1.9.1 | Определен состав модулей третьей очереди и первичные требования подготовлены | milestone | 0d | 2014-03-10 | 2014-03-10 | 216SF | 108d |  |  |  |
| 216 | 1.9.2 | **Проектирование** |  | 15d | 2014-03-10 | 2014-03-31 |  | 93d | 0d |  | 480h |
| 217 | 1.9.2.1 | Определение структуры третьей очереди |  | 11d | 2014-03-10 | 2014-03-25 | 218SF | 97d |  | Андрей Пирожков; Конструктор 1; Денис Митавский; WEB-дизайнер | 352h |
| 218 | 1.9.2.2 | Уточнение состава и сроков работ |  | 4d | 2014-03-25 | 2014-03-31 | 219SF | 93d | 0d | Конструктор 1; Андрей Пирожков; Денис Митавский; WEB-дизайнер | 128h |
| 219 | 1.9.2.3 | Принято решение о разработке модулей второй очереди | milestone | 0d | 2014-03-31 | 2014-03-31 | 221SS | 93d | 0d |  |  |
| 220 | 1.9.3 | **Разработка** |  | 91d | 2014-03-31 | 2014-08-04 | 202 | 0d |  |  | 6752h |
| 221 | 1.9.3.1 | Контроль и корректировка технических решений "Архитектурный комитет" |  | 91d | 2014-03-31 | 2014-08-04 |  | 2d | 0d | Конструктор 1; Андрей Пирожков; Денис Митавский; WEB-дизайнер | 2912h |
| 222 | 1.9.3.2 | **Разработка серверной логики модулей первой очереди** |  | 40d | 2014-03-31 | 2014-05-23 |  | 0d |  |  | 1600h |
| 223 | 1.9.3.2.1 | Разработка схем документов для модулей второй очереди |  | 20d | 2014-03-31 | 2014-04-25 |  | 0d |  | Java разработчик2; Java разработчик | 320h |
| 224 | 1.9.3.2.2 | Разработка ЖЦ процессов (WF) |  | 20d | 2014-04-28 | 2014-05-23 | 223 | 0d |  | Java разработчик2; Java разработчик | 320h |
| 225 | 1.9.3.2.3 | Разработка логики бизнес- действий для модулей второй очереди |  | 40d | 2014-03-31 | 2014-05-23 |  | 0d |  | Java разработчик1; Java разработчик | 640h |
| 226 | 1.9.3.2.4 | Разработка процессов автоматизации для модулей второй очереди |  | 20d | 2014-03-31 | 2014-04-25 |  | 20d |  | Java разработчик | 160h |
| 227 | 1.9.3.2.5 | Разработка модели прав доступа (контекстные роли) |  | 20d | 2014-04-28 | 2014-05-23 | 223 | 0d |  | Java разработчик | 160h |
| 228 | 1.9.3.3 | **Разработка клиентской логики модулей первой очереди** |  | 40d | 2014-03-31 | 2014-05-23 |  | 0d |  |  | 640h |
| 229 | 1.9.3.3.1 | Разработка форм для работы с документами в GUI (настройки форм) |  | 20d | 2014-03-31 | 2014-04-25 |  | 20d |  | Java разработчик3 | 160h |
| 230 | 1.9.3.3.2 | Разработка структуры рабочего места |  | 20d | 2014-04-28 | 2014-05-23 | 223 | 0d |  | Java разработчик3 | 160h |
| 231 | 1.9.3.3.3 | Разработка специфичных для модуля форм элементов GUI |  | 40d | 2014-03-31 | 2014-05-23 |  | 0d |  | Java разработчик4 | 320h |
| 232 | 1.9.3.4 | **Разработка вспомогательного инструментария** |  | 40d | 2014-03-31 | 2014-05-23 |  | 0d |  |  | 1280h |
| 233 | 1.9.3.4.1 | Доработка "Построителя форм" |  | 40d | 2014-03-31 | 2014-05-23 |  | 0d |  | Андрей Цветков | 320h |
| 234 | 1.9.3.4.2 | Доработка "Инсталлятора" |  | 40d | 2014-03-31 | 2014-05-23 |  | 0d |  | Валерий Мацукевич | 320h |
| 235 | 1.9.3.4.3 | Доработка "Конфигуратора" |  | 40d | 2014-03-31 | 2014-05-23 |  | 0d |  | Java разработчик5; Java разработчик | 640h |
| 236 | 1.9.3.5 | Подготовка отчетов для второй очереди модулей |  | 40d | 2014-03-31 | 2014-05-23 |  | 53d |  | Java разработчик | 320h |
| 237 | 1.9.4 | Разработка модулей второй очереди завершена | milestone | 0d | 2014-05-23 | 2014-05-23 | 222, 228, 232 | 0d |  |  |  |

| ID | WBS | Task | Type | Duration | Start | Finish | Predecessors | Total slack | Free slack | Constraint | Resources | Work |
| --- | --- | --- | --- | --- | --- | --- | --- | --- | --- | --- | --- | --- |
| 238 | 1.9.5 | **Тестирование** |  | 78d? | 2014-04-21 | 2014-08-06 | 205 | 0d |  |  |  | 3048h |
| 239 | 1.9.5.1 | **Функциональное тестирование** |  | 63d? | 2014-04-21 | 2014-07-16 |  | 10d |  |  |  | 2424h |
| 240 | 1.9.5.1.1 | Подготовка ПМИ |  | 5d | 2014-04-21 | 2014-04-25 |  | 10d | 0d |  | Тест Аналитик | 40h |
| 241 | 1.9.5.1.2 | Разработка "сценариев тестирования" |  | 15d | 2014-04-21 | 2014-05-09 |  | 10d | 5d |  | Тест Аналитик | 120h |
| 242 | 1.9.5.1.3 | Разработка модели нагрузки для тестирования |  | 10d | 2014-04-28 | 2014-05-09 | 240 | 10d | 5d |  | Тест Аналитик | 80h |
| 243 | 1.9.5.1.4 | **Проведение тестирования** |  | 43d? | 2014-05-19 | 2014-07-16 | 241, 242 | 5d |  |  |  | 2184h |
| 244 | 1.9.5.1.4.1 | **Подготовка среды тестирования** |  | 15d? | 2014-05-19 | 2014-06-06 |  | 5d |  |  |  | 200h |
| 245 | 1.9.5.1.4.1.1 | Разворачивание системы |  | 5d? | 2014-05-19 | 2014-05-26 | 246SF | 53d |  |  | Java разработчик | 40h |
| 246 | 1.9.5.1.4.1.2 | Наполнение данными |  | 10d? | 2014-05-26 | 2014-06-06 | 237 | 0d |  |  | Java разработчик; Java разработчик6 | 160h |
| 247 | 1.9.5.1.4.2 | Среда тестирования готова | milestone | 0d | 2014-06-06 | 2014-06-06 | 246 | 0d |  | finish no earlier than 2012-06-09 |  |  |
| 248 | 1.9.5.1.4.3 | Проведение тестирования |  | 10d | 2014-06-09 | 2014-06-20 | 247 | 0d |  |  | Тест Аналитик; Тестировщик [200%] | 240h |
| 249 | 1.9.5.1.4.4 | **Обработка результатов тестирования и внесение изменений в модуль** |  | 20d | 2014-06-19 | 2014-07-16 | 248FS-2d | 0d |  |  |  | 1744h |
| 250 | 1.9.5.1.4.4.1 | Устранение замечаний по результатам функционального тестирования |  | 20d | 2014-06-19 | 2014-07-16 |  | 0d |  |  | Java разработчик5; Java разработчик [300%]; Валерий Мацукевич; Java разработчик3; Java разработчик4; Java разработчик2; Java разработчик1; Андрей Цветков | 1600h |
| 251 | 1.9.5.1.4.4.2 | Проверка устранения замечаний |  | 6d | 2014-07-09 | 2014-07-16 | 250FS-6d | 0d |  |  | Тест Аналитик; Тестировщик [200%] | 144h |
| 252 | 1.9.5.2 | **Нагрузочное тестирование** |  | 73d | 2014-04-28 | 2014-08-06 | 240 | 0d |  |  |  | 624h |
| 253 | 1.9.5.2.1 | Подготовка автоматизированных сценариев для создания нагрузки |  | 38d | 2014-04-28 | 2014-06-18 |  | 20d |  |  | Java разработчик | 304h |
| 254 | 1.9.5.2.2 | Стенд для нагрузочного тестирования подготовлен | milestone | 0d | 2014-06-20 | 2014-06-20 | 248 | 18d |  | finish no earlier than 2012-06-09 |  |  |
| 255 | 1.9.5.2.3 | Проведения нагрузочного тестирования |  | 10d | 2014-07-17 | 2014-07-30 | 251, 253, 254 | 0d |  |  | Java разработчик; Тест Аналитик; Тестировщик | 240h |
| 256 | 1.9.5.2.4 | Обработка результатов нагрузочного тестирования |  | 5d | 2014-07-31 | 2014-08-06 | 255 | 0d |  |  | Тест Аналитик; Тестировщик | 80h |
| 257 | 1.9.6 | **Подготовка документации** |  | 63d | 2014-04-21 | 2014-07-16 | 238SS | 15d |  |  |  | 160h |
| 258 | 1.9.6.1 | Разработка "Software Architecture Document" для модулей второй очереди |  | 20d | 2014-04-21 | 2014-05-16 |  | 58d | 43d |  | Технический писатель | 160h |
| 259 | 1.9.6.2 | Документы подготовлены | milestone | 0d | 2014-07-16 | 2014-07-16 | 251, 258 | 15d |  |  |  |  |
